# Year 3 Project Plan 7 30

Schedule from MS Project, 2008-07-14 to 2008-09-25, A marks actual dates.
Persistent Systems Pvt. Ltd.

## Calendars

- Standard: Mon-Fri 08:00-12:00, 13:00-17:00; Sat-Sun off. Exceptions (off unless hours are given): 2008-08-15 (Holiday).

## Resources

| Resource |
| --- |
| Chandrakant Talele |
| Lalit Chand |
| Chetan Patil |
| Atul Jawale |
| Hrishikesh Rajpathak |
| Rushikesh Subhedar |
| Deepak Shingan |

## Schedule

| ID | WBS | Task | Duration | Start | Finish | Predecessors | Complete | Remaining | Total slack | Constraint | Resources | Work | Actual work |
| --- | --- | --- | --- | --- | --- | --- | --- | --- | --- | --- | --- | --- | --- |
| 1 | 1 | **October Release** | 41d? | 2008-07-14 A | 2008-09-09 |  | 66% | 14.14d? | 12d |  |  | 1160h | 879.84h |
| 2 | 1.1 | **caB2B_Y3_020Technology Stack Migration** | 27d? | 2008-07-14 A | 2008-08-20 |  | 56% | 11.94d? | 26d |  |  | 256h | 200h |
| 3 | 1.1.1 | **Migrate to Jboss 4.0.5 GA** | 2d | 2008-07-14 A | 2008-07-15 A |  | 100% |  |  |  |  | 16h | 16h |
| 4 | 1.1.1.1 | Changes in existing codebase | 1d | 2008-07-14 A | 2008-07-14 A |  | 100% |  |  | start no earlier than 2008-07-14 | Lalit Chand | 8h | 8h |
| 5 | 1.1.1.2 | Changes in deployment process | 1d | 2008-07-15 A | 2008-07-15 A | 4 | 100% |  |  |  | Lalit Chand | 8h | 8h |
| 6 | 1.1.2 | **Migrate to EJB 3.0** | 13d | 2008-07-16 A | 2008-08-01 A |  | 100% |  |  |  |  | 72h | 72h |
| 7 | 1.1.2.1 | Understanding EJB 3.0 | 5d | 2008-07-16 A | 2008-07-22 A | 5 | 100% |  |  |  | Lalit Chand | 40h | 40h |
| 8 | 1.1.2.2 | Changes in existing codebase | 3d | 2008-07-23 A | 2008-07-25 A | 7 | 100% |  |  |  | Lalit Chand | 24h | 24h |
| 9 | 1.1.2.3 | Changes in deployment process | 1d | 2008-07-28 A | 2008-07-28 A | 8 | 100% |  |  |  | Lalit Chand | 8h | 8h |
| 10 | 1.1.2.4 | Testing and verifications | 4d | 2008-07-29 A | 2008-08-01 A | 9 | 100% |  |  |  |  |  |  |
| 11 | 1.1.3 | Reverting back EJB 3.0 changes | 3d | 2008-08-04 A | 2008-08-06 A | 6 | 100% |  |  |  | Lalit Chand | 24h | 24h |
| 12 | 1.1.4 | **Query Module** | 12d | 2008-08-04 A | 2008-08-20 A |  | 100% |  |  |  |  | 88h | 88h |
| 13 | 1.1.4.1 | Query Module Release UI | 3d | 2008-08-18 A | 2008-08-20 A | 60 | 100% |  |  |  | Deepak Shingan | 24h | 24h |
| 14 | 1.1.4.2 | Query Module Release backend changes | 8d | 2008-08-04 A | 2008-08-20 A | 85 | 100% |  |  | start no earlier than 2008-08-04 | Chetan Patil | 64h | 64h |
| 15 | 1.1.5 | **Moving to caGrid 1.2** | 5d | 2008-07-14 | 2008-07-18 |  |  |  | 43d |  |  | 40h |  |
| 16 | 1.1.5.1 | caB2B Finding & Replacing appropriate jars | 2d | 2008-07-14 | 2008-07-15 |  |  |  | 43d |  | Deepak Shingan | 16h |  |
| 17 | 1.1.5.2 | Admin Finding & Replacing appropriate jars | 2d | 2008-07-16 | 2008-07-17 | 16 |  |  | 43d |  | Deepak Shingan | 16h |  |
| 18 | 1.1.5.3 | Testing | 1d | 2008-07-18 | 2008-07-18 | 17 |  |  | 43d |  | Deepak Shingan | 8h |  |
| 19 | 1.1.6 | **New DE release** | 10d | 2008-07-14 | 2008-07-25 |  |  |  | 43d |  |  |  |  |
| 20 | 1.1.6.1 | Understand new design and identify changes | 2d | 2008-07-14 | 2008-07-15 |  |  |  | 51d |  |  |  |  |
| 21 | 1.1.6.2 | Changs in cab2B and Admin | 10d | 2008-07-14 | 2008-07-25 |  |  |  | 43d |  |  |  |  |
| 22 | 1.1.6.3 | Verification | 4d | 2008-07-14 | 2008-07-17 |  |  |  | 49d |  |  |  |  |
| 23 | 1.1.7 | **java 1.5** | 1d? | 2008-07-14 | 2008-07-14 |  |  |  | 52d |  |  | 16h |  |
| 24 | 1.1.7.1 | Identify changes | 1d? | 2008-07-14 | 2008-07-14 |  |  |  | 52d |  | Lalit Chand | 8h |  |
| 25 | 1.1.7.2 | Solution for client side java 6 components | 1d? | 2008-07-14 | 2008-07-14 |  |  |  | 52d |  | Lalit Chand | 8h |  |

| ID | WBS | Task | Duration | Start | Finish | Predecessors | Complete | Remaining | Total slack | Free slack | Constraint | Resources | Work | Actual work |
| --- | --- | --- | --- | --- | --- | --- | --- | --- | --- | --- | --- | --- | --- | --- |
| 26 | 1.2 | **caB2B_Y3_001-Automatic cache update between admin and cab2b server** | 10d? | 2008-08-27 | 2008-09-09 |  |  |  | 12d |  |  |  | 72h |  |
| 27 | 1.2.1 | Requirement | 1d | 2008-08-27 | 2008-08-27 | 66 |  |  | 12d | 0d |  | Hrishikesh Rajpathak | 8h |  |
| 28 | 1.2.2 | **Investigation** | 7d? | 2008-08-28 | 2008-09-05 | 27 |  |  | 12d | 0d |  |  | 56h |  |
| 29 | 1.2.2.1 | Investigate Component | 5d | 2008-08-28 | 2008-09-03 | 27 |  |  | 12d | 0d |  | Hrishikesh Rajpathak | 40h |  |
| 30 | 1.2.2.2 | Developing Prototype | 1d? | 2008-09-04 | 2008-09-04 | 29 |  |  | 12d | 0d |  | Hrishikesh Rajpathak | 8h |  |
| 31 | 1.2.2.3 | Design | 1d? | 2008-09-05 | 2008-09-05 | 30 |  |  | 12d |  |  | Hrishikesh Rajpathak | 8h |  |
| 32 | 1.2.3 | **Implementation** | 2d? | 2008-09-08 | 2008-09-09 | 28 |  |  | 12d |  |  |  | 8h |  |
| 33 | 1.2.3.1 | Separating out Implementation Deployment Unit | 1d? | 2008-09-08 | 2008-09-08 |  |  |  | 12d | 0d |  | Hrishikesh Rajpathak | 8h |  |
| 34 | 1.2.3.2 | Changes needed in Deployment Process | 1d? | 2008-09-09 | 2008-09-09 | 33 |  |  | 12d |  |  |  |  |  |
| 35 | 1.3 | **caB2B_Y3_005-User to override the URLs** | 14d | 2008-08-13 A | 2008-09-02 |  | 93% | 1.02d | 17d |  |  |  | 112h | 103.84h |
| 36 | 1.3.1 | Requirement | 1d | 2008-08-13 A | 2008-08-13 A | 67 | 100% |  |  |  |  | Atul Jawale | 8h | 8h |
| 37 | 1.3.2 | UI mockups | 1d | 2008-08-14 A | 2008-08-14 A | 36 | 100% |  |  |  |  | Atul Jawale | 8h | 8h |
| 38 | 1.3.3 | Design | 1d | 2008-08-18 A | 2008-08-18 A | 37 | 100% |  |  |  |  | Atul Jawale | 8h | 8h |
| 39 | 1.3.4 | **Implementation** | 11d | 2008-08-19 A | 2008-09-02 | 38 | 91% | 1.02d | 17d |  |  |  | 88h | 79.84h |
| 40 | 1.3.4.1 | UI implementation | 4d | 2008-08-19 A | 2008-08-22 A |  | 100% |  |  |  |  | Atul Jawale | 32h | 32h |
| 41 | 1.3.4.2 | Backend integration | 4d | 2008-08-25 A | 2008-08-28 A | 40 | 100% |  |  |  |  | Atul Jawale | 32h | 32h |
| 42 | 1.3.4.3 | Unit testing | 3d | 2008-08-29 A | 2008-09-02 | 41 | 66% | 1.02d | 17d |  |  | Atul Jawale | 24h | 15.84h |
| 43 | 1.4 | **caB2B_Y3_006-Home page experiments links functional + show all** | 12d | 2008-07-14 A | 2008-07-29 A |  | 100% |  |  |  |  |  | 96h | 96h |
| 44 | 1.4.1 | Requirement | 1d | 2008-07-14 A | 2008-07-14 A |  | 100% |  |  |  | start no earlier than 2008-07-14 | Deepak Shingan | 8h | 8h |
| 45 | 1.4.2 | UI Mockups | 1d | 2008-07-15 A | 2008-07-15 A | 44 | 100% |  |  |  |  | Deepak Shingan | 8h | 8h |
| 46 | 1.4.3 | Design | 1d | 2008-07-16 A | 2008-07-16 A | 45 | 100% |  |  |  |  | Deepak Shingan | 8h | 8h |
| 47 | 1.4.4 | **Implementation** | 9d | 2008-07-17 A | 2008-07-29 A |  | 100% |  |  |  |  |  | 72h | 72h |
| 48 | 1.4.4.1 | Showing recent experiments | 2d | 2008-07-17 A | 2008-07-18 A | 46 | 100% |  |  |  |  | Deepak Shingan | 16h | 16h |
| 49 | 1.4.4.2 | Making links in stack box funtional | 2d | 2008-07-21 A | 2008-07-22 A | 48 | 100% |  |  |  |  | Deepak Shingan | 16h | 16h |
| 50 | 1.4.4.3 | Show All to display all experiments on right side | 3d | 2008-07-23 A | 2008-07-25 A | 49 | 100% |  |  |  |  | Deepak Shingan | 24h | 24h |
| 51 | 1.4.4.4 | Click on any experiment from show all table to open experiment | 2d | 2008-07-28 A | 2008-07-29 A | 50 | 100% |  |  |  |  | Deepak Shingan | 16h | 16h |

| ID | WBS | Task | Duration | Start | Finish | Predecessors | Complete | Total slack | Free slack | Constraint | Resources | Work | Actual work |
| --- | --- | --- | --- | --- | --- | --- | --- | --- | --- | --- | --- | --- | --- |
| 52 | 1.5 | **caB2B_Y3_007-Home page category links functional + show all** | 12d | 2008-07-30 A | 2008-08-14 A |  | 100% |  |  |  |  | 96h | 96h |
| 53 | 1.5.1 | Requirement | 1d | 2008-07-30 A | 2008-07-30 A | 43 | 100% |  |  |  | Deepak Shingan | 8h | 8h |
| 54 | 1.5.2 | UI Mockups | 1d | 2008-07-31 A | 2008-07-31 A | 53 | 100% |  |  |  | Deepak Shingan | 8h | 8h |
| 55 | 1.5.3 | Design | 1d | 2008-08-01 A | 2008-08-01 A | 54 | 100% |  |  |  | Deepak Shingan | 8h | 8h |
| 56 | 1.5.4 | **Implementation** | 9d | 2008-08-04 A | 2008-08-14 A |  | 100% |  |  |  |  | 72h | 72h |
| 57 | 1.5.4.1 | Showing all categories | 2d | 2008-08-04 A | 2008-08-05 A | 55 | 100% |  |  |  | Deepak Shingan | 16h | 16h |
| 58 | 1.5.4.2 | Clicking on category in stack box to open add limit page | 2d | 2008-08-06 A | 2008-08-07 A | 57 | 100% |  |  |  | Deepak Shingan | 16h | 16h |
| 59 | 1.5.4.3 | Show All to display all categories on right side | 3d | 2008-08-08 A | 2008-08-12 A | 58 | 100% |  |  |  | Deepak Shingan | 24h | 24h |
| 60 | 1.5.4.4 | Click on any category from show all table to open it in add limit page | 2d | 2008-08-13 A | 2008-08-14 A | 59 | 100% |  |  |  | Deepak Shingan | 16h | 16h |
| 61 | 1.6 | **caB2B_Y3_008-Popular categories** | 21d | 2008-07-28 A | 2008-08-26 A |  | 100% |  |  |  |  | 160h | 160h |
| 62 | 1.6.1 | Requirement | 8d | 2008-07-28 A | 2008-08-06 A |  | 100% |  |  | start no earlier than 2008-07-28 | Hrishikesh Rajpathak | 64h | 64h |
| 63 | 1.6.2 | Design | 5d | 2008-08-07 A | 2008-08-14 A | 62 | 100% |  |  | finish no earlier than 2008-08-14 | Hrishikesh Rajpathak | 40h | 40h |
| 64 | 1.6.3 | **Implementation** | 7d | 2008-08-18 A | 2008-08-26 A |  | 100% |  |  |  |  | 56h | 56h |
| 65 | 1.6.3.1 | Calculating popularity | 3d | 2008-08-18 A | 2008-08-20 A | 63 | 100% |  |  |  | Hrishikesh Rajpathak | 24h | 24h |
| 66 | 1.6.3.2 | Storing and using popularity | 4d | 2008-08-21 A | 2008-08-26 A | 65 | 100% |  |  | finish no earlier than 2008-08-08 | Hrishikesh Rajpathak | 32h | 32h |
| 67 | 1.7 | **caB2B_Y3_009-Fixing the current washU services for index service** | 21d | 2008-07-14 A | 2008-08-11 A |  | 100% |  |  |  |  | 168h | 168h |
| 68 | 1.7.1 | Learning service, discovery and metadata | 5d | 2008-07-14 A | 2008-07-18 A |  | 100% |  |  |  | Atul Jawale | 40h | 40h |
| 69 | 1.7.2 | Finding the cause | 5d | 2008-07-21 A | 2008-07-25 A | 68 | 100% |  |  |  | Atul Jawale | 40h | 40h |
| 70 | 1.7.3 | Investigating on fixes / solutions | 5d | 2008-07-28 A | 2008-08-01 A | 69 | 100% |  |  |  | Atul Jawale | 40h | 40h |
| 71 | 1.7.4 | Fixing Services | 6d | 2008-08-04 A | 2008-08-11 A | 70 | 100% |  |  |  | Atul Jawale | 48h | 48h |
| 72 | 1.8 | **caArray caTissue Integration** | 8d | 2008-07-14 | 2008-07-23 |  |  | 45d |  |  |  | 64h |  |
| 73 | 1.8.1 | Investigation | 3d | 2008-07-14 | 2008-07-16 |  |  | 45d | 0d |  | Chetan Patil | 24h |  |
| 74 | 1.8.2 | Testing Patch | 2d | 2008-07-17 | 2008-07-18 | 73 |  | 45d | 0d |  | Chetan Patil | 16h |  |
| 75 | 1.8.3 | Pushing patch into WashU instance | 3d | 2008-07-21 | 2008-07-23 | 74 |  | 45d |  |  | Chetan Patil | 24h |  |

| ID | WBS | Task | Duration | Start | Finish | Predecessors | Complete | Remaining | Total slack | Free slack | Constraint | Resources | Work | Actual work |
| --- | --- | --- | --- | --- | --- | --- | --- | --- | --- | --- | --- | --- | --- | --- |
| 76 | 1.9 | **Exposing CQL’s on the User Interface** | 12d | 2008-07-14 | 2008-07-29 |  |  |  | 41d |  |  |  |  |  |
| 77 | 1.9.1 | Requirement | 1d | 2008-07-14 | 2008-07-14 |  |  |  | 41d | 0d |  |  |  |  |
| 78 | 1.9.2 | UI mockups | 1d | 2008-07-15 | 2008-07-15 | 77 |  |  | 41d | 0d |  |  |  |  |
| 79 | 1.9.3 | Design | 2d | 2008-07-16 | 2008-07-17 | 78 |  |  | 41d | 0d |  |  |  |  |
| 80 | 1.9.4 | **Implementation** | 8d | 2008-07-18 | 2008-07-29 | 79 |  |  | 41d |  |  |  |  |  |
| 81 | 1.9.4.1 | UI implementation | 4d | 2008-07-18 | 2008-07-23 |  |  |  | 41d | 0d |  |  |  |  |
| 82 | 1.9.4.2 | Backend integration | 4d | 2008-07-24 | 2008-07-29 | 81 |  |  | 41d |  |  |  |  |  |
| 83 | 1.10 | Knowledge Transfer from Deepak | 5d | 2008-07-21 | 2008-07-25 | 18 |  |  | 43d |  |  | Atul Jawale; Deepak Shingan | 80h |  |
| 84 | 1.11 | **Bugs Fixing** | 21d | 2008-07-31 A | 2008-08-29 A |  | 100% |  |  |  |  |  | 56h | 56h |
| 85 | 1.11.1 | Bug# 8070 | 2d | 2008-07-31 A | 2008-08-01 A | 112 | 100% |  |  |  | start no earlier than 2008-08-04 | Chetan Patil | 16h | 16h |
| 86 | 1.11.2 | caTissue core service instance | 1d | 2008-08-12 A | 2008-08-12 A |  | 100% |  |  |  | start no earlier than 2008-08-08 | Atul Jawale | 8h | 8h |
| 87 | 1.11.3 | Bug 9090 & 9138 fix | 2d | 2008-08-26 A | 2008-08-27 A |  | 100% |  |  |  | finish no earlier than 2008-08-27 | Chetan Patil | 16h | 16h |
| 88 | 1.11.4 | Bug 9221 fix | 2d | 2008-08-28 A | 2008-08-29 A |  | 100% |  |  |  | finish no earlier than 2008-08-29 | Chetan Patil | 16h | 16h |
| 89 | 1.12 | QA cycle | 1d? | 2008-07-14 | 2008-07-14 |  |  |  | 52d |  |  |  |  |  |
| 90 | 2 | **Milestone 2** | 53d? | 2008-07-14 A | 2008-09-25 |  | 2% | 52.12d? | 0d |  |  |  | 248h | 16h |
| 91 | 2.1 | **Representing grid user in caB2B** | 1d? | 2008-07-14 | 2008-07-14 |  |  |  | 52d |  |  |  |  |  |
| 92 | 2.1.1 | Investigating APIs needed | 1d? | 2008-07-14 | 2008-07-14 |  |  |  | 52d |  |  |  |  |  |
| 93 | 2.1.2 | Design to store user identity locally | 1d? | 2008-07-14 | 2008-07-14 |  |  |  | 52d |  |  |  |  |  |
| 94 | 2.1.3 | Design review by external parties | 1d? | 2008-07-14 | 2008-07-14 |  |  |  | 52d |  |  |  |  |  |
| 95 | 2.2 | Expansion of categories | 1d? | 2008-07-14 | 2008-07-14 |  |  |  | 52d |  |  |  |  |  |
| 96 | 2.3 | **caB2B_Y3_002-User based experiments** | 5d? | 2008-07-14 | 2008-07-18 |  |  |  | 43d | 0d |  |  | 40h |  |
| 97 | 2.3.1 | Requirement | 1d? | 2008-07-14 | 2008-07-14 |  |  |  | 43d | 0d |  | Lalit Chand | 8h |  |
| 98 | 2.3.2 | Design | 1d? | 2008-07-15 | 2008-07-15 | 97 |  |  | 43d | 0d |  | Lalit Chand | 8h |  |
| 99 | 2.3.3 | **Implementation** | 3d? | 2008-07-16 | 2008-07-18 |  |  |  | 43d |  |  |  | 24h |  |
| 100 | 2.3.3.1 | Saving experiments on user basis | 1d? | 2008-07-16 | 2008-07-16 | 98 |  |  | 43d | 0d |  | Lalit Chand | 8h |  |
| 101 | 2.3.3.2 | Changes needed at client-server interface to pass user info | 1d? | 2008-07-17 | 2008-07-17 | 100 |  |  | 43d | 0d |  | Lalit Chand | 8h |  |
| 102 | 2.3.3.3 | Fetch and display experiments based on user | 1d? | 2008-07-18 | 2008-07-18 | 101 |  |  | 43d |  |  | Lalit Chand | 8h |  |

| ID | WBS | Task | Duration | Start | Finish | Predecessors | Complete | Remaining | Total slack | Free slack | Constraint | Resources | Work | Actual work |
| --- | --- | --- | --- | --- | --- | --- | --- | --- | --- | --- | --- | --- | --- | --- |
| 103 | 2.4 | **caB2B_Y3_003-User based saved queries** | 5d? | 2008-07-21 | 2008-07-25 |  |  |  | 43d |  |  |  | 40h |  |
| 104 | 2.4.1 | Requirement | 1d? | 2008-07-21 | 2008-07-21 | 96 |  |  | 43d | 0d |  | Lalit Chand | 8h |  |
| 105 | 2.4.2 | Design | 1d? | 2008-07-22 | 2008-07-22 | 104 |  |  | 43d | 0d |  | Lalit Chand | 8h |  |
| 106 | 2.4.3 | **Implementation** | 3d? | 2008-07-23 | 2008-07-25 |  |  |  | 43d |  |  |  | 24h |  |
| 107 | 2.4.3.1 | Saving queries on user basis | 1d? | 2008-07-23 | 2008-07-23 | 105 |  |  | 43d | 0d |  | Lalit Chand | 8h |  |
| 108 | 2.4.3.2 | Changes needed at client-server interface to pass user info | 1d? | 2008-07-24 | 2008-07-24 | 107 |  |  | 43d | 0d |  | Lalit Chand | 8h |  |
| 109 | 2.4.3.3 | Fetch and display experiments based on user | 1d? | 2008-07-25 | 2008-07-25 | 108 |  |  | 43d |  |  | Lalit Chand | 8h |  |
| 110 | 2.5 | **Schedular component + notification functionality** | 37d | 2008-07-29 A | 2008-09-18 |  | 13% | 32.38d | 0d |  |  |  | 128h | 16h |
| 111 | 2.5.1 | **Schedular** | 28d | 2008-07-29 A | 2008-09-05 |  | 29% | 20d | 0d |  |  |  | 56h | 16h |
| 112 | 2.5.1.1 | Investigate Component | 2d | 2008-07-29 A | 2008-07-30 A |  | 100% |  |  |  |  | Chetan Patil | 16h | 16h |
| 113 | 2.5.1.2 | Developing Prototype | 5d | 2008-09-01 | 2008-09-05 |  |  |  | 0d |  | start no earlier than 2008-09-01 | Chetan Patil | 40h |  |
| 114 | 2.5.2 | **Notification** | 9d | 2008-09-08 | 2008-09-18 |  |  |  | 0d |  |  |  | 72h |  |
| 115 | 2.5.2.1 | UI mockup | 1d | 2008-09-08 | 2008-09-08 | 113 |  |  | 0d |  |  | Chetan Patil | 8h |  |
| 116 | 2.5.2.2 | UI implementation | 3d | 2008-09-09 | 2008-09-11 | 115 |  |  | 0d |  |  | Chetan Patil | 24h |  |
| 117 | 2.5.2.3 | Backend Implementation | 5d | 2008-09-12 | 2008-09-18 | 116 |  |  | 0d |  |  | Chetan Patil | 40h |  |
| 118 | 2.6 | **caB2B_Y3_004-Asynchronous execution of queries** | 5d? | 2008-09-19 | 2008-09-25 | 110 |  |  | 0d |  |  |  | 40h |  |
| 119 | 2.6.1 | Requirement | 1d? | 2008-09-19 | 2008-09-19 |  |  |  | 0d |  |  | Chetan Patil | 8h |  |
| 120 | 2.6.2 | Design | 1d? | 2008-09-22 | 2008-09-22 | 119 |  |  | 0d |  |  | Chetan Patil | 8h |  |
| 121 | 2.6.3 | **Implementation** | 3d? | 2008-09-23 | 2008-09-25 | 120 |  |  | 0d |  |  |  | 24h |  |
| 122 | 2.6.3.1 | Represent schedule | 1d? | 2008-09-23 | 2008-09-23 |  |  |  | 0d |  |  | Chetan Patil | 8h |  |
| 123 | 2.6.3.2 | Storing schedule and firing jobs | 1d? | 2008-09-24 | 2008-09-24 | 122 |  |  | 0d |  |  | Chetan Patil | 8h |  |
| 124 | 2.6.3.3 | Implementing job for query execution | 1d? | 2008-09-25 | 2008-09-25 | 123 |  |  | 0d |  |  | Chetan Patil | 8h |  |
| 125 | 2.7 | **caB2B_Y3_010-Support WS enumerations data services** | 1d? | 2008-07-14 | 2008-07-14 |  |  |  | 52d |  |  |  |  |  |
| 126 | 2.7.1 | Requirement | 1d? | 2008-07-14 | 2008-07-14 |  |  |  | 52d |  |  |  |  |  |

| ID | WBS | Task | Duration | Start | Finish | Total slack | Constraint |
| --- | --- | --- | --- | --- | --- | --- | --- |
| 127 | 2.7.2 | **Investigation** | 1d? | 2008-07-14 | 2008-07-14 | 52d |  |
| 128 | 2.7.2.1 | Investigate Component | 1d? | 2008-07-14 | 2008-07-14 | 52d |  |
| 129 | 2.7.2.2 | Developing Prototype | 1d? | 2008-07-14 | 2008-07-14 | 52d |  |
| 130 | 2.7.3 | Design | 1d? | 2008-07-14 | 2008-07-14 | 52d |  |
| 131 | 2.7.4 | **Implementation** | 1d? | 2008-07-14 | 2008-07-14 | 52d |  |
| 132 | 2.7.4.1 | Separating out Implementation Deployment Unit | 1d? | 2008-07-14 | 2008-07-14 | 52d |  |
| 133 | 2.7.4.2 | Changes needed in Deployment Process | 1d? | 2008-07-14 | 2008-07-14 | 52d |  |
| 134 | 2.8 | **caB2B_Y3_012-Asynchronous of save data list** | 15d? | 2008-07-14 | 2008-08-01 | 38d |  |
| 135 | 2.8.1 | Requirement | 1d? | 2008-07-14 | 2008-07-14 | 52d |  |
| 136 | 2.8.2 | **Investigation** | 1d? | 2008-07-14 | 2008-07-14 | 52d |  |
| 137 | 2.8.2.1 | Investigate Component | 1d? | 2008-07-14 | 2008-07-14 | 52d |  |
| 138 | 2.8.2.2 | Developing Prototype | 1d? | 2008-07-14 | 2008-07-14 | 52d |  |
| 139 | 2.8.3 | Design | 1d? | 2008-07-14 | 2008-07-14 | 52d |  |
| 140 | 2.8.4 | **Implementation** | 15d? | 2008-07-14 | 2008-08-01 | 38d |  |
| 141 | 2.8.4.1 | Separating out Implementation Deployment Unit | 1d? | 2008-07-14 | 2008-07-14 | 52d |  |
| 142 | 2.8.4.2 | Changes needed in Deployment Process | 1d? | 2008-08-01 | 2008-08-01 | 38d | finish no earlier than 2008-08-01 |
| 143 | 2.9 | **caB2B_Y3_013-intermodel joins for a group like washU, NCICB , Intermodel joins with pair of service instances** | 1d? | 2008-07-14 | 2008-07-14 | 52d |  |
| 144 | 2.9.1 | Requirement | 1d? | 2008-07-14 | 2008-07-14 | 52d |  |
| 145 | 2.9.2 | **Investigation** | 1d? | 2008-07-14 | 2008-07-14 | 52d |  |
| 146 | 2.9.2.1 | Investigate Component | 1d? | 2008-07-14 | 2008-07-14 | 52d |  |
| 147 | 2.9.2.2 | Developing Prototype | 1d? | 2008-07-14 | 2008-07-14 | 52d |  |
| 148 | 2.9.3 | Design | 1d? | 2008-07-14 | 2008-07-14 | 52d |  |
| 149 | 2.9.4 | **Implementation** | 1d? | 2008-07-14 | 2008-07-14 | 52d |  |
| 150 | 2.9.4.1 | Separating out Implementation Deployment Unit | 1d? | 2008-07-14 | 2008-07-14 | 52d |  |
| 151 | 2.9.4.2 | Changes needed in Deployment Process | 1d? | 2008-07-14 | 2008-07-14 | 52d |  |

| ID | WBS | Task | Duration | Start | Finish | Total slack |
| --- | --- | --- | --- | --- | --- | --- |
| 152 | 2.10 | **caB2B_Y3_014-Experiments with multiple datalists, edit expr to add data list with way to re-query (more likely)** | 1d? | 2008-07-14 | 2008-07-14 | 52d |
| 153 | 2.10.1 | Requirement | 1d? | 2008-07-14 | 2008-07-14 | 52d |
| 154 | 2.10.2 | UI Mockups | 1d? | 2008-07-14 | 2008-07-14 | 52d |
| 155 | 2.10.3 | Design | 1d? | 2008-07-14 | 2008-07-14 | 52d |
| 156 | 2.10.4 | **Implementation** | 1d? | 2008-07-14 | 2008-07-14 | 52d |
| 157 | 2.10.4.1 | UI for data list viewer | 1d? | 2008-07-14 | 2008-07-14 | 52d |
| 158 | 2.10.4.2 | Changes needed in Experiment module | 1d? | 2008-07-14 | 2008-07-14 | 52d |
| 159 | 2.10.4.3 | backend support for multiple data list | 1d? | 2008-07-14 | 2008-07-14 | 52d |
| 160 | 2.11 | **caB2B_Y3_015-Support for getting probe data from caArray. For CEL files no need to bring data back to cab2b server, just get the URL and send it to analytical service** | 1d? | 2008-07-14 | 2008-07-14 | 52d |
| 161 | 2.11.1 | Requirement | 1d? | 2008-07-14 | 2008-07-14 | 52d |
| 162 | 2.11.2 | **Investigation** | 1d? | 2008-07-14 | 2008-07-14 | 52d |
| 163 | 2.11.2.1 | Investigate Component | 1d? | 2008-07-14 | 2008-07-14 | 52d |
| 164 | 2.11.2.2 | Developing Prototype | 1d? | 2008-07-14 | 2008-07-14 | 52d |
| 165 | 2.11.3 | Design | 1d? | 2008-07-14 | 2008-07-14 | 52d |
| 166 | 2.11.4 | **Implementation** | 1d? | 2008-07-14 | 2008-07-14 | 52d |
| 167 | 2.11.4.1 | Separating out Implementation Deployment Unit | 1d? | 2008-07-14 | 2008-07-14 | 52d |
| 168 | 2.11.4.2 | Changes needed in Deployment Process | 1d? | 2008-07-14 | 2008-07-14 | 52d |
| 169 | 2.12 | **caB2B_Y3_016-Support basic analytical services (support for ICR services, if needed, do customizations)** | 1d? | 2008-07-14 | 2008-07-14 | 52d |
| 170 | 2.12.1 | Requirement | 1d? | 2008-07-14 | 2008-07-14 | 52d |
| 171 | 2.12.2 | **Investigation** | 1d? | 2008-07-14 | 2008-07-14 | 52d |
| 172 | 2.12.2.1 | Investigate Component | 1d? | 2008-07-14 | 2008-07-14 | 52d |
| 173 | 2.12.2.2 | Developing Prototype | 1d? | 2008-07-14 | 2008-07-14 | 52d |
| 174 | 2.12.3 | Design | 1d? | 2008-07-14 | 2008-07-14 | 52d |
| 175 | 2.12.4 | **Implementation** | 1d? | 2008-07-14 | 2008-07-14 | 52d |
| 176 | 2.12.4.1 | Separating out Implementation Deployment Unit | 1d? | 2008-07-14 | 2008-07-14 | 52d |
| 177 | 2.12.4.2 | Changes needed in Deployment Process | 1d? | 2008-07-14 | 2008-07-14 | 52d |

| ID | WBS | Task | Duration | Start | Finish | Total slack |
| --- | --- | --- | --- | --- | --- | --- |
| 178 | 2.13 | **caB2B_Y3_017-Viewers for supported analytical services** | 1d? | 2008-07-14 | 2008-07-14 | 52d |
| 179 | 2.13.1 | Requirement | 1d? | 2008-07-14 | 2008-07-14 | 52d |
| 180 | 2.13.2 | **Investigation** | 1d? | 2008-07-14 | 2008-07-14 | 52d |
| 181 | 2.13.2.1 | Investigate Component | 1d? | 2008-07-14 | 2008-07-14 | 52d |
| 182 | 2.13.2.2 | Developing Prototype | 1d? | 2008-07-14 | 2008-07-14 | 52d |
| 183 | 2.13.3 | Design | 1d? | 2008-07-14 | 2008-07-14 | 52d |
| 184 | 2.13.4 | **Implementation** | 1d? | 2008-07-14 | 2008-07-14 | 52d |
| 185 | 2.13.4.1 | Separating out Implementation Deployment Unit | 1d? | 2008-07-14 | 2008-07-14 | 52d |
| 186 | 2.13.4.2 | Changes needed in Deployment Process | 1d? | 2008-07-14 | 2008-07-14 | 52d |
| 187 | 2.14 | **caB2B_Y3_018-Returning result of a federated query even if only one of the instances is failed** | 1d? | 2008-07-14 | 2008-07-14 | 52d |
| 188 | 2.14.1 | Requirement | 1d? | 2008-07-14 | 2008-07-14 | 52d |
| 189 | 2.14.2 | **Investigation** | 1d? | 2008-07-14 | 2008-07-14 | 52d |
| 190 | 2.14.2.1 | Investigate Component | 1d? | 2008-07-14 | 2008-07-14 | 52d |
| 191 | 2.14.2.2 | Developing Prototype | 1d? | 2008-07-14 | 2008-07-14 | 52d |
| 192 | 2.14.3 | Design | 1d? | 2008-07-14 | 2008-07-14 | 52d |
| 193 | 2.14.4 | **Implementation** | 1d? | 2008-07-14 | 2008-07-14 | 52d |
| 194 | 2.14.4.1 | Separating out Implementation Deployment Unit | 1d? | 2008-07-14 | 2008-07-14 | 52d |
| 195 | 2.14.4.2 | Changes needed in Deployment Process | 1d? | 2008-07-14 | 2008-07-14 | 52d |
| 196 | 2.15 | **caB2B_Y3_019-Intermodel joins with multiple attributes** | 1d? | 2008-07-14 | 2008-07-14 | 52d |
| 197 | 2.15.1 | Requirement | 1d? | 2008-07-14 | 2008-07-14 | 52d |
| 198 | 2.15.2 | **Investigation** | 1d? | 2008-07-14 | 2008-07-14 | 52d |
| 199 | 2.15.2.1 | Investigate Component | 1d? | 2008-07-14 | 2008-07-14 | 52d |
| 200 | 2.15.2.2 | Developing Prototype | 1d? | 2008-07-14 | 2008-07-14 | 52d |
| 201 | 2.15.3 | Design | 1d? | 2008-07-14 | 2008-07-14 | 52d |

| ID | WBS | Task | Duration | Start | Finish | Total slack |
| --- | --- | --- | --- | --- | --- | --- |
| 202 | 2.15.4 | **Implementation** | 1d? | 2008-07-14 | 2008-07-14 | 52d |
| 203 | 2.15.4.1 | Separating out Implementation Deployment Unit | 1d? | 2008-07-14 | 2008-07-14 | 52d |
| 204 | 2.15.4.2 | Changes needed in Deployment Process | 1d? | 2008-07-14 | 2008-07-14 | 52d |
| 205 | 2.16 | **Advanced result view** | 1d? | 2008-07-14 | 2008-07-14 | 52d |
| 206 | 2.16.1 | Understanding requirement | 1d? | 2008-07-14 | 2008-07-14 | 52d |
| 207 | 2.16.2 | UI mock ups | 1d? | 2008-07-14 | 2008-07-14 | 52d |
| 208 | 2.16.3 | Design | 1d? | 2008-07-14 | 2008-07-14 | 52d |
| 209 | 2.16.4 | **UI implementation** | 1d? | 2008-07-14 | 2008-07-14 | 52d |
| 210 | 2.16.4.1 | Changes on define result view(step 3 of wizard) | 1d? | 2008-07-14 | 2008-07-14 | 52d |
| 211 | 2.16.4.2 | Changes in the advanced view result | 1d? | 2008-07-14 | 2008-07-14 | 52d |
| 212 | 2.16.5 | **Backend implementation** | 1d? | 2008-07-14 | 2008-07-14 | 52d |
| 213 | 2.16.5.1 | query changes to get all the objects asked in the result view | 1d? | 2008-07-14 | 2008-07-14 | 52d |
| 214 | 2.16.5.2 | changes in datalist | 1d? | 2008-07-14 | 2008-07-14 | 52d |
| 215 | 2.17 | **QA cycle** | 1d? | 2008-07-14 | 2008-07-14 | 52d |
| 216 | 2.17.1 | Writing testcases for new functionalities | 1d? | 2008-07-14 | 2008-07-14 | 52d |
| 217 | 2.17.2 | Build 1 for QA | 1d? | 2008-07-14 | 2008-07-14 | 52d |
| 218 | 2.17.3 | Testing Build 1 | 1d? | 2008-07-14 | 2008-07-14 | 52d |
| 219 | 2.17.4 | Fix bugs reported in Build 1 | 1d? | 2008-07-14 | 2008-07-14 | 52d |
| 220 | 2.17.5 | Demo to washU users | 1d? | 2008-07-14 | 2008-07-14 | 52d |
| 221 | 2.17.6 | Build 2 for QA | 1d? | 2008-07-14 | 2008-07-14 | 52d |
| 222 | 2.17.7 | Testing of Build 2 (by QA + washU users) | 1d? | 2008-07-14 | 2008-07-14 | 52d |
| 223 | 2.17.8 | Regression Testing | 1d? | 2008-07-14 | 2008-07-14 | 52d |
| 224 | 2.17.9 | Fix bugs reported in (Build 2 + regression testing) | 1d? | 2008-07-14 | 2008-07-14 | 52d |
| 225 | 2.18 | **Release Candidate 1** | 1d? | 2008-07-14 | 2008-07-14 | 52d |
| 226 | 2.18.1 | Release to QA + washU users for accepatance | 1d? | 2008-07-14 | 2008-07-14 | 52d |
| 227 | 2.18.2 | Verification of fixed bugs | 1d? | 2008-07-14 | 2008-07-14 | 52d |
| 228 | 2.18.3 | UAT by QA + washU users | 1d? | 2008-07-14 | 2008-07-14 | 52d |
| 229 | 2.18.4 | UAT bug fixing | 1d? | 2008-07-14 | 2008-07-14 | 52d |

Notes:
- 205: Use case: User has created a query and now wants to add a new class without any limits, just to fetch this additional associated information. / For example, while finding the GBM specimens user wants to know under what collection protocol the samples were collected. / The result view should also be a more user friendly view where classes are represented in a tree like format.

| ID | WBS | Task | Duration | Start | Finish | Total slack |
| --- | --- | --- | --- | --- | --- | --- |
| 230 | 2.19 | **Release activities** | 1d? | 2008-07-14 | 2008-07-14 | 52d |
| 231 | 2.19.1 | Updating washU servers | 1d? | 2008-07-14 | 2008-07-14 | 52d |
| 232 | 2.19.2 | Updating G-forge | 1d? | 2008-07-14 | 2008-07-14 | 52d |
| 233 | 2.19.3 | Updating website (cab2b.wustl.edu) | 1d? | 2008-07-14 | 2008-07-14 | 52d |
| 234 | 2.19.4 | Updating caBIG Tools Page | 1d? | 2008-07-14 | 2008-07-14 | 52d |
| 235 | 2.20 | **Documentation** | 1d? | 2008-07-14 | 2008-07-14 | 52d |
| 236 | 2.20.1 | Admin end user manual | 1d? | 2008-07-14 | 2008-07-14 | 52d |
| 237 | 2.20.2 | Admin design document | 1d? | 2008-07-14 | 2008-07-14 | 52d |
| 238 | 2.20.3 | Update design document | 1d? | 2008-07-14 | 2008-07-14 | 52d |
| 239 | 2.20.4 | Update end user manual update | 1d? | 2008-07-14 | 2008-07-14 | 52d |
| 240 | 2.21 | **Documentation Review** | 1d? | 2008-07-14 | 2008-07-14 | 52d |
| 241 | 2.21.1 | Review by NCICB Leads | 1d? | 2008-07-14 | 2008-07-14 | 52d |
| 242 | 2.21.2 | D&T Review | 1d? | 2008-07-14 | 2008-07-14 | 52d |
| 243 | 2.22 | Final Documentation | 1d? | 2008-07-14 | 2008-07-14 | 52d |
